# Umbau Auf der Wörth 14

Schedule from ProjectLibre, 2023-07-03 to 2023-10-05.

## Calendars

- Standard: Mon-Fri 08:00-12:00, 13:00-17:00; Sat-Sun off.

## Resources

| Resource |
| --- |
| Nicht zugeordnet |
| Kettler |
| Prinz |
| Budke |
| Koste |
| Kiy |
| Schornsteinfeger |
| Anten |
| Erdgeschoss |
| Obergeschoss |
| Wellmann |
| Lampe |
| Anna-Carina |
| Andreas |
| OG Kind 2 |
| OG Schlafen |
| OG Küche |
| OG Wohnen |
| OG Kleiner Flur |
| OG Flur |
| OG Gäste-WC |
| OG Hauswirtschaftsraum |
| OG Büro |
| OG Badezimmer |
| EG Eingangsbereich |
| EG Badezimmer |

## Schedule

| ID | WBS | Task | Duration | Start | Finish | Predecessors | Constraint | Resources |
| --- | --- | --- | --- | --- | --- | --- | --- | --- |
| 1 | 1 | Koste: Installation Wasser- und Abwasserleitungen | 5d? | 2023-08-01 | 2023-08-07 |  | start no earlier than 2023-08-01 | Koste |
| 2 | 2 | Entscheidung Beleuchtung im Flur | 0.5d | 2023-08-03 | 2023-08-03 |  | start no earlier than 2023-08-03 | Anna-Carina; Andreas |
| 3 | 3 | **Kabel ziehen und Dosen setzen** | 2d | 2023-08-03 | 2023-08-04 |  | start no earlier than 2023-07-24 | Prinz; Obergeschoss |
| 4 | 3.1 | Deckenbeleuchtung Flur | 1d | 2023-08-03 | 2023-08-04 | 2 |  | Obergeschoss; Prinz |
| 5 | 3.2 | Badezimmer | 2d | 2023-08-03 | 2023-08-04 |  | start no earlier than 2023-08-03 | Obergeschoss; Prinz |
| 6 | 4 | **Kabel ziehen und Dosen setzen** | 2d | 2023-07-24 | 2023-07-25 |  | start no earlier than 2023-07-24 | Prinz; Erdgeschoss |
| 7 | 4.1 | Kabel Steckdosen Eingangsbereich | 2d | 2023-07-24 | 2023-07-25 |  |  | Erdgeschoss; Prinz |
| 8 | 5 | Wände putzen EG | 1d? | 2023-07-26 | 2023-07-26 | 6 |  | Kettler; Erdgeschoss |
| 10 | 6 | Fotodokumentation der Installation in den offenen Wänden | 1d | 2023-08-08 | 2023-08-08 | 1, 3 |  | Andreas |
| 12 | 7 | Budke: Wände beplanken | 14d | 2023-08-09 | 2023-08-28 | 1, 3, 10 | start no earlier than 2023-08-08 | Budke |
| 13 | 8 | **\Vorwände im Badezimmer** | 1d? | 2023-08-08 | 2023-08-08 | 5, 1 | start no earlier than 2023-08-01 | Budke |
| 14 | 8.1 | Vorwand: Wachbecken | 1d | 2023-08-08 | 2023-08-08 |  | start no earlier than 2023-08-08 | Budke; OG Badezimmer |
| 15 | 8.2 | Vorwand: Toilette | 1d? | 2023-08-08 | 2023-08-08 |  | start no earlier than 2023-08-08 | Budke; OG Badezimmer |
| 16 | 8.3 | Sitzbank / Vorwand: Dusche | 1d? | 2023-08-08 | 2023-08-08 |  | start no earlier than 2023-08-08 | Budke; OG Badezimmer |
| 17 | 8.4 | Trockenbau Badewanne | 1d? | 2023-08-08 | 2023-08-08 |  | start no earlier than 2023-08-08 | Budke; OG Badezimmer |
| 19 | 9 | Bodentank | 1d? | 2023-08-08 | 2023-08-08 |  | start no earlier than 2023-08-08 | Budke; OG Büro |
| 20 | 10 | Fußbodenheizung verlegen | 5d | 2023-08-29 | 2023-09-04 | 12, 13, 19 | start no earlier than 2023-08-01 | Koste |
| 21 | 11 | Fußbodenheizung OG Badezimmer | 1d? | 2023-08-09 | 2023-08-09 | 13 |  | Koste; OG Badezimmer |
| 23 | 12 | Trockenestrich verlegen | 5d | 2023-09-05 | 2023-09-11 | 20 | start no earlier than 2023-08-01 | Budke |
| 28 | 13 | Fliesen bestellen | 0.5d | 2023-08-01 | 2023-08-01 |  | start no earlier than 2023-08-01 | Anna-Carina; Andreas |
| 29 | 14 | Lieferzeit: Fliesen | 35d? | 2023-08-01 | 2023-09-19 | 28 | start no earlier than 2023-08-01 |  |
| 30 | 15 | Parkett bestellen | 0.5d | 2023-08-01 | 2023-08-01 |  | start no earlier than 2023-08-01 | Anna-Carina; Andreas |
| 31 | 16 | Lieferzeit: Parkett | 35d? | 2023-08-01 | 2023-09-19 | 30 | start no earlier than 2023-08-01 |  |
| 32 | 17 | **Bodenbeläge** | 1d? | 2023-09-19 | 2023-09-20 | 23, 31 | start no earlier than 2023-08-01 | Kiy |
| 33 | 17.1 | Kind 2 | 1d? | 2023-09-19 | 2023-09-20 |  |  |  |
| 34 | 17.2 | Schlafen | 1d? | 2023-09-19 | 2023-09-20 |  |  |  |
| 35 | 17.3 | Kleiner Flur | 1d? | 2023-09-19 | 2023-09-20 |  |  |  |
| 36 | 17.4 | Küche | 1d? | 2023-09-19 | 2023-09-20 |  |  |  |
| 37 | 17.5 | Wohnzimmer | 1d? | 2023-09-19 | 2023-09-20 |  |  |  |
| 38 | 17.6 | Flur | 1d? | 2023-09-19 | 2023-09-20 |  |  |  |
| 39 | 17.7 | Gäste-WC | 1d? | 2023-09-19 | 2023-09-20 |  |  |  |
| 40 | 17.8 | Hauswirtschaftsraum | 1d? | 2023-09-19 | 2023-09-20 |  |  |  |
| 41 | 17.9 | Büro | 1d? | 2023-09-19 | 2023-09-20 |  |  |  |

Notes:
- 19: - Rauspund aufnehmen - Unterkonstruktion für Bodentank einbauen - Netzwerk-Kabel unter den Balken zum Bodentank führen - Rauspund schließen

| ID | WBS | Task | Duration | Start | Finish | Predecessors | Constraint | Resources |
| --- | --- | --- | --- | --- | --- | --- | --- | --- |
| 42 | 18 | **Anten: Kaminaufbau** | 14d? | 2023-09-15 | 2023-10-04 |  | start no earlier than 2023-09-15 | Anten |
| 43 | 18.1 | Sockel mauern | 1d | 2023-09-15 | 2023-09-15 |  | start no earlier than 2023-09-15 | Anten |
| 44 | 18.2 | Kamineinsatz installieren | 1d | 2023-09-18 | 2023-09-18 | 43 | start no earlier than 2023-09-15 | Anten |
| 45 | 18.3 | Schamotte-Steine setzen | 1d | 2023-09-19 | 2023-09-19 | 44 | start no earlier than 2023-09-15 | Anten |
| 46 | 18.4 | Funktionsprüfung | 1d | 2023-09-20 | 2023-09-20 | 45 | start no earlier than 2023-09-15 | Anten |
| 47 | 18.5 | Rechnungstellung | 10d? | 2023-09-21 | 2023-10-04 | 46 |  | Anten |
| 48 | 19 | Kaminabnahme | 2d | 2023-09-21 | 2023-09-22 | 46 | start no earlier than 2023-09-15 | Schornsteinfeger |
| 50 | 20 | Verspachteln | 3d? | 2023-08-29 | 2023-08-31 | 12 |  | Kiy; Obergeschoss |
| 51 | 21 | **Kiy: Tapezieren** | 3d? | 2023-09-01 | 2023-09-05 | 50 | start no earlier than 2023-09-01 | Kiy; Obergeschoss |
| 52 | 21.1 | Kind 2 | 1d? | 2023-09-01 | 2023-09-01 |  |  | Kiy |
| 53 | 21.2 | Schlafen | 1d? | 2023-09-01 | 2023-09-01 |  | start no earlier than 2023-09-01 | Kiy |
| 54 | 21.3 | Kleiner Flur | 1d? | 2023-09-02 | 2023-09-04 |  | start no earlier than 2023-09-02 | Kiy |
| 55 | 21.4 | Küche | 1d? | 2023-09-02 | 2023-09-04 |  | start no earlier than 2023-09-02 | Kiy |
| 56 | 21.5 | Wohnzimmer | 1d? | 2023-09-03 | 2023-09-04 |  | start no earlier than 2023-09-03 | Kiy |
| 57 | 21.6 | Flur | 1d? | 2023-09-04 | 2023-09-04 |  | start no earlier than 2023-09-04 | Kiy |
| 58 | 21.7 | Gäste-WC | 1d? | 2023-09-05 | 2023-09-05 |  | start no earlier than 2023-09-05 | Kiy |
| 59 | 21.8 | Hauswirtschaftsraum | 1d? | 2023-09-05 | 2023-09-05 |  | start no earlier than 2023-09-05 | Kiy |
| 60 | 21.9 | Büro | 1d? | 2023-09-05 | 2023-09-05 |  | start no earlier than 2023-09-05 | Kiy |
| 61 | 22 | **Kiy: Streichen** | 1d? | 2023-09-01 | 2023-09-01 |  | start no earlier than 2023-09-01 | Kiy; Obergeschoss |
| 62 | 22.1 | Kind 2 | 1d? | 2023-09-01 | 2023-09-01 |  |  | Kiy |
| 63 | 22.2 | Schlafen | 1d? | 2023-09-01 | 2023-09-01 |  |  | Kiy |
| 64 | 22.3 | Kleiner Flur | 1d? | 2023-09-01 | 2023-09-01 |  |  | Kiy |
| 65 | 22.4 | Küche | 1d? | 2023-09-01 | 2023-09-01 |  |  | Kiy |
| 66 | 22.5 | Wohnzimmer | 1d? | 2023-09-01 | 2023-09-01 |  |  | Kiy |
| 67 | 22.6 | Flur | 1d? | 2023-09-01 | 2023-09-01 |  |  | Kiy |
| 68 | 22.7 | Gäste-WC | 1d? | 2023-09-01 | 2023-09-01 |  |  | Kiy |
| 69 | 22.8 | Hauswirtschaftsraum | 1d? | 2023-09-01 | 2023-09-01 |  |  | Kiy |
| 70 | 22.9 | Büro | 1d? | 2023-09-01 | 2023-09-01 |  |  | Kiy |
| 72 | 23 | Koste: Installation Sanitärartikel | 5d | 2023-09-04 | 2023-09-08 | 61 | start no earlier than 2023-08-01 | Koste |

| ID | WBS | Task | Duration | Start | Finish | Predecessors | Constraint | Resources |
| --- | --- | --- | --- | --- | --- | --- | --- | --- |
| 73 | 24 | **Prinz: Steckdosen, Schalter etc. installieren** | 1d? | 2023-09-04 | 2023-09-04 | 61 | start no earlier than 2023-09-01 | Obergeschoss; Prinz |
| 74 | 24.1 | Kind 2 | 1d? | 2023-09-04 | 2023-09-04 |  |  |  |
| 75 | 24.2 | Schlafen | 1d? | 2023-09-04 | 2023-09-04 |  |  |  |
| 76 | 24.3 | Kleiner Flur | 1d? | 2023-09-04 | 2023-09-04 |  |  |  |
| 77 | 24.4 | Küche | 1d? | 2023-09-04 | 2023-09-04 |  |  |  |
| 78 | 24.5 | Wohnzimmer | 1d? | 2023-09-04 | 2023-09-04 |  |  |  |
| 79 | 24.6 | Flur | 1d? | 2023-09-04 | 2023-09-04 |  |  |  |
| 80 | 24.7 | Gäste-WC | 1d? | 2023-09-04 | 2023-09-04 |  |  |  |
| 81 | 24.8 | Hauswirtschaftsraum | 1d? | 2023-09-04 | 2023-09-04 |  |  |  |
| 82 | 24.9 | Büro | 1d? | 2023-09-04 | 2023-09-04 |  |  |  |
| 84 | 25 | Isolation der Bodenplatte | 5d? | 2023-08-03 | 2023-08-09 |  | start no earlier than 2023-08-03 |  |
| 85 | 26 | Fußbodenheizung aufbauen | 3d? | 2023-08-10 | 2023-08-14 | 84 | start no earlier than 2022-09-01 | Erdgeschoss; Koste |
| 86 | 27 | **Estrich EG** | 23d? | 2023-08-15 | 2023-09-14 | 85 |  |  |
| 87 | 27.1 | Estricheinteilung planen | 1d? | 2023-08-15 | 2023-08-15 |  | start no earlier than 2023-08-07 |  |
| 88 | 27.2 | Estrich gießen | 1d? | 2023-08-16 | 2023-08-16 | 87 | start no earlier than 2023-08-08 | Kettler; Erdgeschoss |
| 89 | 27.3 | Estrich trocknen | 1d? | 2023-08-17 | 2023-08-17 | 88 |  |  |
| 90 | 27.4 | Estrich aufwärmen | 20d | 2023-08-18 | 2023-09-14 | 89 |  |  |
| 91 | 28 | **Fliesenlegen EG** | 1d? | 2023-09-15 | 2023-09-15 | 90 |  | Erdgeschoss |
| 92 | 28.1 | Eingangsbereich | 1d? | 2023-09-15 | 2023-09-15 |  |  |  |
| 93 | 28.2 | Badezimmer EG | 1d? | 2023-09-15 | 2023-09-15 |  |  |  |
| 94 | 29 | **Wände putzen OG** | 1d? | 2023-07-03 | 2023-07-03 |  |  | Kettler; Obergeschoss |
| 95 | 29.1 | Wohnzimmer | 1d? | 2023-07-03 | 2023-07-03 |  |  |  |
| 96 | 29.2 | Kind 1 | 1d? | 2023-07-03 | 2023-07-03 |  |  |  |
| 97 | 30 | **Tapezieren** | 1d? | 2023-08-18 | 2023-08-18 | 89 | start no earlier than 2023-08-01 | Erdgeschoss |
| 98 | 30.1 | Eingangsbereich | 1d? | 2023-08-18 | 2023-08-18 |  |  |  |
| 99 | 30.2 | Badezimmer EG | 1d? | 2023-08-18 | 2023-08-18 |  |  |  |

| ID | WBS | Task | Duration | Start | Finish | Predecessors | Constraint | Resources |
| --- | --- | --- | --- | --- | --- | --- | --- | --- |
| 100 | 31 | **Streichen** | 1d? | 2023-07-03 | 2023-07-03 |  |  | Kiy |
| 101 | 31.1 | Eingangsbereich EG | 1d? | 2023-07-03 | 2023-07-03 |  |  | Kiy |
| 102 | 31.2 | Badezimmer EG | 1d? | 2023-07-03 | 2023-07-03 |  |  | Kiy |
| 105 | 32 | Holzbauarbeiten: Rechnungstellung | 1d? | 2023-07-03 | 2023-07-03 |  |  | Budke |
| 106 | 33 | Malerarbeiten: Rechnungstellung | 1d? | 2023-07-04 | 2023-07-04 | 100 |  | Kiy |
| 108 | 34 | Innentüren bestellen | 1d? | 2023-07-03 | 2023-07-03 |  |  |  |
| 109 | 35 | Innentüren: Lieferzeit | 20d? | 2023-07-04 | 2023-07-31 | 108 |  |  |
| 110 | 36 | Innentüren montieren | 2d? | 2023-08-01 | 2023-08-02 | 109 |  |  |
| 111 | 37 | Innentüren: Rechnungsstellung | 10d? | 2023-08-03 | 2023-08-16 | 110 |  |  |
| 113 | 38 | Treppe entwerfen | 1d? | 2023-08-02 | 2023-08-02 |  | start no earlier than 2023-08-02 | Wellmann; Anna-Carina; Andreas |
| 114 | 39 | Treppe ausmessen | 1d? | 2023-08-17 | 2023-08-17 | 88 | start no earlier than 2023-08-02 | Wellmann |
| 115 | 40 | Treppe bauen | 20d? | 2023-08-18 | 2023-09-14 | 113, 114 | start no earlier than 2023-08-02 | Wellmann |
| 116 | 41 | Treppe montieren | 3d? | 2023-09-18 | 2023-09-20 | 91, 115 | start no earlier than 2023-08-02 | Wellmann |
| 117 | 42 | Treppe: Rechnungstellung | 10d | 2023-09-21 | 2023-10-04 | 116 |  | Wellmann |
| 119 | 43 | Denkmalschutzrechtliche Abnahme | 1d? | 2023-07-03 | 2023-07-03 |  |  | Lampe |
| 120 | 44 | Rechnungsprüfung zwecks Auszahlung der Fördermittel | 1d? | 2023-10-05 | 2023-10-05 | 47, 48, 110, 117, 119 |  |  |
