# Umbau Auf der Wörth 14

Schedule from ProjectLibre, 2023-07-24 to 2023-10-20.

## Calendars

- Standard: Mon-Fri 08:00-12:00, 13:00-17:00; Sat-Sun off.

## Resources

| Resource |
| --- |
| Nicht zugeordnet |
| Kettler |
| Prinz |
| Budke |
| Koste |
| Kiy |
| Schornsteinfeger |
| Anten |
| Erdgeschoss |
| Obergeschoss |
| Wellmann |
| Lampe |
| Anna-Carina |
| Andreas |
| OG Kind 2 |
| OG Schlafen |
| OG Küche |
| OG Wohnen |
| OG Kleiner Flur |
| OG Flur |
| OG Gäste-WC |
| OG Hauswirtschaftsraum |
| OG Büro |
| OG Badezimmer |
| EG Eingangsbereich |
| EG Badezimmer |
| Siggi |
| Löseke |
| Rolfes |
| Estrichleger |
| Putzer |
| von Garrel |

## Schedule

| ID | WBS | Task | Duration | Start | Finish | Predecessors | Constraint | Resources |
| --- | --- | --- | --- | --- | --- | --- | --- | --- |
| 1 | 1 | **(Ab-)Wasserleitungen** | 1d? | 2023-08-07 | 2023-08-07 |  | start no earlier than 2023-07-24 |  |
| 2 | 1.1 | **Koste: Installation Wasser- und Abwasserleitungen** | 1d? | 2023-08-07 | 2023-08-07 |  | start no earlier than 2023-08-01 | Koste |
| 3 | 1.1.1 | OG Badezimmer | 1d? | 2023-08-07 | 2023-08-07 |  | start no earlier than 2023-08-07 |  |
| 4 | 1.1.2 | OG Küche | 1d? | 2023-08-07 | 2023-08-07 |  | start no earlier than 2023-08-07 |  |
| 5 | 1.2 | Anschluss des Abwasserrohres an das Dreikammersystem | 1d? | 2023-08-07 | 2023-08-07 |  | start no earlier than 2023-08-07 | Koste |
| 7 | 2 | Kran abbauen | 1d | 2023-08-07 | 2023-08-07 |  | start no earlier than 2023-08-07 | Budke |
| 9 | 3 | **Fernleitungen** | 10.5d? | 2023-08-08 | 2023-08-22 | 7 |  |  |
| 10 | 3.1 | Minibagger holen | 0.25d? | 2023-08-08 | 2023-08-08 |  |  | Andreas |
| 11 | 3.2 | Pflaster aufnehmen | 3d? | 2023-08-08 | 2023-08-10 |  |  | Andreas; Siggi |
| 12 | 3.3 | Graben ausheben | 3d? | 2023-08-11 | 2023-08-15 | 10, 11 |  | Andreas |
| 13 | 3.4 | Fernwärmeleitung verlegen | 1d? | 2023-08-16 | 2023-08-16 | 12 |  | Koste |
| 14 | 3.5 | CAT 6-Kabel verlegen | 1d? | 2023-08-16 | 2023-08-16 | 12 |  | Prinz |
| 15 | 3.6 | Leerrohr verlegen | 1d? | 2023-08-16 | 2023-08-16 | 12 |  |  |
| 16 | 3.7 | 16A-Kabel verlegen | 1d? | 2023-08-16 | 2023-08-16 | 12 |  | Prinz |
| 17 | 3.8 | Leerrohr Glasfaser verlegen | 1d? | 2023-08-16 | 2023-08-16 | 12 |  |  |
| 18 | 3.9 | Graben zuschütten | 3d? | 2023-08-17 | 2023-08-21 | 17, 14, 16, 13 |  | Andreas |
| 19 | 3.10 | Pflaster schließen | 0.5d? | 2023-08-22 | 2023-08-22 | 18 |  | Andreas; Siggi |
| 20 | 3.11 | Minibagger zurückbringen | 0.25d | 2023-08-22 | 2023-08-22 | 18 |  | Andreas |
| 22 | 4 | **Kabel und Dosen OG** | 12d? | 2023-07-24 | 2023-08-08 |  | start no earlier than 2023-07-24 | Prinz; Obergeschoss |
| 23 | 4.1 | Entscheidung Beleuchtung im Flur | 0.5d | 2023-08-03 | 2023-08-03 |  | start no earlier than 2023-08-03 | Anna-Carina; Andreas |
| 24 | 4.2 | Deckenbeleuchtung Flur | 1d | 2023-08-03 | 2023-08-04 | 23 |  | Obergeschoss; Prinz |
| 25 | 4.3 | Badezimmer | 2d | 2023-08-03 | 2023-08-04 |  | start no earlier than 2023-08-03 | Obergeschoss; Prinz |
| 26 | 4.4 | Doseneinsätze montieren | 1d? | 2023-07-24 | 2023-07-24 |  |  | Obergeschoss; Prinz |
| 27 | 4.5 | Fotodokumentation der Installation in den offenen Wänden | 1d | 2023-08-08 | 2023-08-08 | 2 |  | Andreas |
| 28 | 4.6 | Rechnungstellung Kabel und Dosen OG | 1d? | 2023-07-24 | 2023-07-24 |  |  | Prinz |

| ID | WBS | Task | Duration | Start | Finish | Predecessors | Constraint | Resources |
| --- | --- | --- | --- | --- | --- | --- | --- | --- |
| 30 | 5 | **Kabel und Dosen EG** | 2d? | 2023-07-24 | 2023-07-25 |  | start no earlier than 2023-07-24 | Erdgeschoss; Prinz |
| 31 | 5.1 | Kabel Steckdosen Eingangsbereich | 2d | 2023-07-24 | 2023-07-25 |  |  | Erdgeschoss; Prinz |
| 32 | 5.2 | Doseneinsätze montieren | 1d? | 2023-07-24 | 2023-07-24 |  |  | Erdgeschoss; Prinz |
| 33 | 5.3 | Rechnungstellung Kabel und Dosen EG | 1d? | 2023-07-24 | 2023-07-24 |  |  | Prinz |
| 35 | 6 | **Vorwände im Badezimmer** | 11d? | 2023-08-08 | 2023-08-22 | 2, 25 | start no earlier than 2023-08-01 | Budke |
| 36 | 6.1 | Vorwand: Wachbecken | 1d | 2023-08-08 | 2023-08-08 |  | start no earlier than 2023-08-08 | Budke; OG Badezimmer |
| 37 | 6.2 | Vorwand: Toilette | 1d? | 2023-08-08 | 2023-08-08 |  | start no earlier than 2023-08-08 | Budke; OG Badezimmer |
| 38 | 6.3 | Sitzbank / Vorwand: Dusche | 1d? | 2023-08-08 | 2023-08-08 |  | start no earlier than 2023-08-08 | Budke; OG Badezimmer |
| 39 | 6.4 | Trockenbau Badewanne | 1d? | 2023-08-08 | 2023-08-08 |  | start no earlier than 2023-08-08 | Budke; OG Badezimmer |
| 40 | 6.5 | Rechnungstellung: Vorwände im Badezimmer | 10d? | 2023-08-09 | 2023-08-22 | 36, 37, 38, 39 |  |  |
| 42 | 7 | **Bodenaufbau OG** | 26.5d? | 2023-08-07 | 2023-09-12 |  | start no earlier than 2023-08-01 |  |
| 43 | 7.1 | **Bodentanks** | 1.12d? | 2023-08-07 | 2023-08-08 |  | start no earlier than 2023-08-07 |  |
| 44 | 7.1.1 | Unterkonstruktion bauen | 1d? | 2023-08-07 | 2023-08-07 |  | start no earlier than 2023-08-07 | Andreas |
| 45 | 7.1.2 | Bodentank Büro montieren | 0.12d | 2023-08-08 | 2023-08-08 | 44 | start no earlier than 2023-08-07 | Budke; OG Büro |
| 46 | 7.1.3 | Bodentank Wohnen montieren | 0.12d | 2023-08-08 | 2023-08-08 | 44 | start no earlier than 2023-08-07 | Budke; OG Wohnen |
| 47 | 7.2 | **Fußbodenheizung** | 1d? | 2023-08-23 | 2023-08-23 |  |  | Koste; OG Badezimmer |
| 48 | 7.2.1 | OG Badezimmer | 1d? | 2023-08-23 | 2023-08-23 | 35 |  |  |
| 49 | 7.3 | Trockenestrich verlegen | 5d | 2023-08-24 | 2023-08-30 | 47 | start no earlier than 2023-08-01 | Budke |
| 50 | 7.4 | Fliesen bestellen | 0.5d | 2023-08-14 | 2023-08-14 |  | start no earlier than 2023-08-14 | Anna-Carina; Andreas |
| 51 | 7.5 | Lieferzeit: Fliesen | 20d | 2023-08-14 | 2023-09-11 | 50 | start no earlier than 2023-08-01 |  |
| 52 | 7.6 | Parkett bestellen | 0.5d | 2023-08-14 | 2023-08-14 |  | start no earlier than 2023-08-14 | Anna-Carina; Andreas |
| 53 | 7.7 | Lieferzeit: Parkett | 20d | 2023-08-14 | 2023-09-11 | 52 | start no earlier than 2023-08-01 |  |
| 54 | 7.8 | **Bodenbeläge** | 1d? | 2023-09-11 | 2023-09-12 | 53, 49 | start no earlier than 2023-08-01 | Kiy |
| 55 | 7.8.1 | Kind 2 | 1d? | 2023-09-11 | 2023-09-12 |  |  |  |
| 56 | 7.8.2 | Schlafen | 1d? | 2023-09-11 | 2023-09-12 |  |  |  |
| 57 | 7.8.3 | Kleiner Flur | 1d? | 2023-09-11 | 2023-09-12 |  |  |  |
| 58 | 7.8.4 | Küche | 1d? | 2023-09-11 | 2023-09-12 |  |  |  |
| 59 | 7.8.5 | Wohnzimmer | 1d? | 2023-09-11 | 2023-09-12 |  |  |  |
| 60 | 7.8.6 | Flur | 1d? | 2023-09-11 | 2023-09-12 |  |  |  |
| 61 | 7.8.7 | Gäste-WC | 1d? | 2023-09-11 | 2023-09-12 |  |  |  |
| 62 | 7.8.8 | Hauswirtschaftsraum | 1d? | 2023-09-11 | 2023-09-12 |  |  |  |
| 63 | 7.8.9 | Büro | 1d? | 2023-09-11 | 2023-09-12 |  |  |  |

Notes:
- 45: - Rauspund aufnehmen - Unterkonstruktion für Bodentank einbauen - Netzwerk-Kabel unter den Balken zum Bodentank führen - Rauspund schließen

| ID | WBS | Task | Duration | Start | Finish | Predecessors | Constraint | Resources |
| --- | --- | --- | --- | --- | --- | --- | --- | --- |
| 65 | 8 | **Wände OG** | 18d? | 2023-08-07 | 2023-08-30 |  | start no earlier than 2023-08-07 |  |
| 66 | 8.1 | Metallfenster streichen | 1d? | 2023-08-07 | 2023-08-07 |  |  | Andreas |
| 67 | 8.2 | Metallfenster verglasen | 1d? | 2023-08-08 | 2023-08-08 | 66 |  | von Garrel |
| 68 | 8.3 | Metallfenster in Küchenwand einsetzen | 1d? | 2023-08-09 | 2023-08-09 | 67 |  | Budke |
| 69 | 8.4 | Budke: Wände beplanken | 14d | 2023-08-10 | 2023-08-29 | 2, 22, 27, 68 | start no earlier than 2023-08-08 | Budke |
| 70 | 8.5 | Holzbauarbeiten: Rechnungstellung | 1d? | 2023-08-30 | 2023-08-30 | 69 |  | Budke |
| 71 | 8.6 | **Wände putzen OG** | 1d? | 2023-08-07 | 2023-08-07 |  |  | Obergeschoss |
| 72 | 8.6.1 | Wohnzimmer | 1d? | 2023-08-07 | 2023-08-07 |  |  | Putzer |
| 73 | 8.6.2 | Kind 1 | 1d? | 2023-08-07 | 2023-08-07 |  |  | Putzer |
| 75 | 9 | **Küche** | 40d? | 2023-08-14 | 2023-10-06 |  | start no earlier than 2023-08-14 |  |
| 76 | 9.1 | Exaktes Aufmaß | 1d? | 2023-09-12 | 2023-09-13 | 58, 65 |  |  |
| 77 | 9.2 | Lieferzeit | 40d? | 2023-08-14 | 2023-10-06 |  |  |  |
| 78 | 9.3 | Deckenlampen | 1d? | 2023-08-14 | 2023-08-14 |  |  |  |
| 79 | 9.4 | Montage | 3d? | 2023-08-14 | 2023-08-16 |  |  |  |
| 81 | 10 | **Heizungsanlage** | 20.25d? | 2023-08-07 | 2023-09-04 |  |  |  |
| 82 | 10.1 | Heizkessel aufbauen | 2d? | 2023-08-07 | 2023-08-08 |  | start no earlier than 2023-08-07 | Koste |
| 83 | 10.2 | Heizungsanlage an Fernwärme anschließen | 2d? | 2023-08-17 | 2023-08-18 | 85, 13 |  | Koste |
| 84 | 10.3 | Schiefe Ebene im Holzbunker aufbauen | 2d? | 2023-08-07 | 2023-08-08 |  | start no earlier than 2023-08-07 |  |
| 85 | 10.4 | Speicher aufbauen | 2d? | 2023-08-07 | 2023-08-08 |  | start no earlier than 2023-08-07 | Koste |
| 86 | 10.5 | Speicher an Fernwärme anschließen | 1d? | 2023-08-17 | 2023-08-17 | 13 |  |  |
| 87 | 10.6 | Abnahme Heizungsanlage | 0.25d? | 2023-08-21 | 2023-08-21 | 83 |  | Andreas; Anna-Carina; Koste |
| 88 | 10.7 | Rechnungstellung | 10d? | 2023-08-21 | 2023-09-04 | 87 |  | Koste |
| 90 | 11 | **Badezimmer-Fenster** | 23.5d? | 2023-08-07 | 2023-09-07 |  | start no earlier than 2023-08-07 |  |
| 91 | 11.1 | Ziegel aus Feldern entfernen | 1d? | 2023-08-07 | 2023-08-07 |  |  | Kettler |
| 92 | 11.2 | Öffnungen ausmessen | 1d? | 2023-08-08 | 2023-08-08 | 91 |  | Rolfes |
| 93 | 11.3 | Fenster bauen | 10d? | 2023-08-09 | 2023-08-22 | 92 |  | Rolfes |
| 94 | 11.4 | Fenster montieren | 1d? | 2023-08-23 | 2023-08-23 | 93 |  | Rolfes |
| 95 | 11.5 | Abnahme: Badezimmer-Fenster | 0.5d? | 2023-08-24 | 2023-08-24 | 94 |  | Andreas; Anna-Carina |
| 96 | 11.6 | Rechnungsstellung: Badezimmer Fenster | 10d? | 2023-08-24 | 2023-09-07 | 95 |  | Rolfes |

| ID | WBS | Task | Duration | Start | Finish | Predecessors | Constraint | Resources |
| --- | --- | --- | --- | --- | --- | --- | --- | --- |
| 98 | 12 | **Kaminaufbau** | 14d? | 2023-09-15 | 2023-10-04 |  | start no earlier than 2023-09-15 |  |
| 99 | 12.1 | Sockel mauern | 1d | 2023-09-15 | 2023-09-15 |  | start no earlier than 2023-09-15 | Anten |
| 100 | 12.2 | Kamineinsatz installieren | 1d | 2023-09-18 | 2023-09-18 | 99 | start no earlier than 2023-09-15 | Anten |
| 101 | 12.3 | Schamotte-Steine setzen | 1d | 2023-09-19 | 2023-09-19 | 100 | start no earlier than 2023-09-15 | Anten |
| 102 | 12.4 | Funktionsprüfung | 1d | 2023-09-20 | 2023-09-20 | 101 | start no earlier than 2023-09-15 | Anten |
| 103 | 12.5 | Rechnungstellung | 10d? | 2023-09-21 | 2023-10-04 | 102 |  | Anten |
| 104 | 12.6 | Kaminabnahme | 2d | 2023-09-21 | 2023-09-22 | 102 | start no earlier than 2023-09-15 | Schornsteinfeger |
| 106 | 13 | **Wände OG** | 22d? | 2023-08-07 | 2023-09-05 |  | start no earlier than 2023-08-07 |  |
| 107 | 13.1 | Verspachteln | 3d? | 2023-08-30 | 2023-09-01 | 69 |  | Kiy; Obergeschoss |
| 108 | 13.2 | Tapezieren | 1d? | 2023-08-07 | 2023-08-07 |  |  |  |
| 109 | 13.3 | Streichen | 1d? | 2023-08-07 | 2023-08-07 |  |  |  |
| 110 | 13.4 | **Kiy: Tapezieren** | 2d? | 2023-09-04 | 2023-09-05 | 107 | start no earlier than 2023-09-01 | Kiy; Obergeschoss |
| 111 | 13.4.1 | Kind 2 | 1d? | 2023-09-04 | 2023-09-04 |  |  | Kiy |
| 112 | 13.4.2 | Schlafen | 1d? | 2023-09-04 | 2023-09-04 |  | start no earlier than 2023-09-01 | Kiy |
| 113 | 13.4.3 | Kleiner Flur | 1d? | 2023-09-04 | 2023-09-04 |  | start no earlier than 2023-09-02 | Kiy |
| 114 | 13.4.4 | Küche | 1d? | 2023-09-04 | 2023-09-04 |  | start no earlier than 2023-09-02 | Kiy |
| 115 | 13.4.5 | Wohnzimmer | 1d? | 2023-09-04 | 2023-09-04 |  | start no earlier than 2023-09-03 | Kiy |
| 116 | 13.4.6 | Flur | 1d? | 2023-09-04 | 2023-09-04 |  | start no earlier than 2023-09-04 | Kiy |
| 117 | 13.4.7 | Gäste-WC | 1d? | 2023-09-05 | 2023-09-05 |  | start no earlier than 2023-09-05 | Kiy |
| 118 | 13.4.8 | Hauswirtschaftsraum | 1d? | 2023-09-05 | 2023-09-05 |  | start no earlier than 2023-09-05 | Kiy |
| 119 | 13.4.9 | Büro | 1d? | 2023-09-05 | 2023-09-05 |  | start no earlier than 2023-09-05 | Kiy |
| 120 | 13.5 | **Kiy: Streichen** | 1d? | 2023-09-01 | 2023-09-01 |  | start no earlier than 2023-09-01 | Kiy; Obergeschoss |
| 121 | 13.5.1 | Kind 2 | 1d? | 2023-09-01 | 2023-09-01 |  |  | Kiy |
| 122 | 13.5.2 | Schlafen | 1d? | 2023-09-01 | 2023-09-01 |  |  | Kiy |
| 123 | 13.5.3 | Kleiner Flur | 1d? | 2023-09-01 | 2023-09-01 |  |  | Kiy |
| 124 | 13.5.4 | Küche | 1d? | 2023-09-01 | 2023-09-01 |  |  | Kiy |
| 125 | 13.5.5 | Wohnzimmer | 1d? | 2023-09-01 | 2023-09-01 |  |  | Kiy |
| 126 | 13.5.6 | Flur | 1d? | 2023-09-01 | 2023-09-01 |  |  | Kiy |
| 127 | 13.5.7 | Gäste-WC | 1d? | 2023-09-01 | 2023-09-01 |  |  | Kiy |
| 128 | 13.5.8 | Hauswirtschaftsraum | 1d? | 2023-09-01 | 2023-09-01 |  |  | Kiy |
| 129 | 13.5.9 | Büro | 1d? | 2023-09-01 | 2023-09-01 |  |  | Kiy |
| 130 | 13.5.10 | Malerarbeiten: Rechnungstellung OG | 1d? | 2023-09-01 | 2023-09-01 | 168 |  | Kiy |

| ID | WBS | Task | Duration | Start | Finish | Predecessors | Constraint | Resources |
| --- | --- | --- | --- | --- | --- | --- | --- | --- |
| 132 | 14 | **Koste: Installation Sanitärartikel** | 2d? | 2023-09-04 | 2023-09-05 | 120 | start no earlier than 2023-08-07 | Koste |
| 133 | 14.1 | Sanitärartikel Badezimmer OG | 1d? | 2023-09-04 | 2023-09-04 |  |  | Koste; OG Badezimmer |
| 134 | 14.2 | Sanitärartikel Gäste WC OG | 1d? | 2023-09-04 | 2023-09-04 |  |  | Koste; OG Gäste-WC |
| 135 | 14.3 | Sanitärartikel Badezimmer EG | 2d? | 2023-09-04 | 2023-09-05 |  |  | EG Badezimmer; Koste |
| 137 | 15 | **Prinz: Steckdosen, Schalter etc. installieren** | 1d? | 2023-09-04 | 2023-09-04 | 120 | start no earlier than 2023-08-07 | Obergeschoss; Prinz |
| 138 | 15.1 | Kind 2 | 1d? | 2023-09-04 | 2023-09-04 |  |  |  |
| 139 | 15.2 | Schlafen | 1d? | 2023-09-04 | 2023-09-04 |  |  |  |
| 140 | 15.3 | Kleiner Flur | 1d? | 2023-09-04 | 2023-09-04 |  |  |  |
| 141 | 15.4 | Küche | 1d? | 2023-09-04 | 2023-09-04 |  |  |  |
| 142 | 15.5 | Wohnzimmer | 1d? | 2023-09-04 | 2023-09-04 |  |  |  |
| 143 | 15.6 | Flur | 1d? | 2023-09-04 | 2023-09-04 |  |  |  |
| 144 | 15.7 | Gäste-WC | 1d? | 2023-09-04 | 2023-09-04 |  |  |  |
| 145 | 15.8 | Hauswirtschaftsraum | 1d? | 2023-09-04 | 2023-09-04 |  |  |  |
| 146 | 15.9 | Büro | 1d? | 2023-09-04 | 2023-09-04 |  |  |  |
| 148 | 16 | **Bodenaufbau EG** | 21d? | 2023-08-07 | 2023-09-04 |  | start no earlier than 2023-08-07 |  |
| 149 | 16.1 | Estricheinteilung planen | 1d? | 2023-08-07 | 2023-08-07 |  | start no earlier than 2023-08-07 | Estrichleger |
| 150 | 16.2 | Isolation der Bodenplatte | 5d? | 2023-08-07 | 2023-08-11 |  | start no earlier than 2023-08-03 | Estrichleger |
| 151 | 16.3 | **Fußbodenheizung aufbauen** | 0.5d? | 2023-08-14 | 2023-08-14 | 150 | start no earlier than 2022-09-01 | Erdgeschoss; Koste |
| 152 | 16.3.1 | Fußbodenheizung EG Empfangsbereich | 0.5d? | 2023-08-14 | 2023-08-14 |  |  | Koste |
| 153 | 16.3.2 | Fußbodenheizung EG Badezimmer | 0.5d? | 2023-08-14 | 2023-08-14 |  |  | Koste |
| 154 | 16.4 | Estrich gießen | 1d? | 2023-08-08 | 2023-08-08 | 149 | start no earlier than 2023-08-08 | Erdgeschoss; Estrichleger |
| 155 | 16.5 | Estrich trockenen & aufwärmen | 20d | 2023-08-07 | 2023-09-01 |  |  |  |
| 156 | 16.6 | Fliesenlegen EG Eingangsbereich | 1d? | 2023-09-04 | 2023-09-04 | 155 |  | Erdgeschoss |
| 157 | 16.7 | Fliesenlegen EG Badezimmer | 1d? | 2023-09-04 | 2023-09-04 | 155 |  | EG Badezimmer |

| ID | WBS | Task | Duration | Start | Finish | Predecessors | Constraint | Resources |
| --- | --- | --- | --- | --- | --- | --- | --- | --- |
| 159 | 17 | **Wände EG** | 3d? | 2023-08-07 | 2023-08-09 |  | start no earlier than 2023-08-07 |  |
| 160 | 17.1 | Silikatplatten montieren | 3d? | 2023-08-07 | 2023-08-09 |  |  | EG Eingangsbereich; EG Badezimmer; Kiy |
| 161 | 17.2 | Wände putzen EG | 1d? | 2023-08-07 | 2023-08-07 | 30 |  | Erdgeschoss; Kettler |
| 162 | 17.3 | Spachteln | 1d? | 2023-08-07 | 2023-08-07 |  |  |  |
| 163 | 17.4 | Tapezieren | 1d? | 2023-08-07 | 2023-08-07 |  |  |  |
| 164 | 17.5 | Streichen | 1d? | 2023-08-07 | 2023-08-07 |  |  |  |
| 165 | 17.6 | **Tapezieren** | 1d? | 2023-08-07 | 2023-08-07 |  | start no earlier than 2023-08-01 | Erdgeschoss |
| 166 | 17.6.1 | Eingangsbereich | 1d? | 2023-08-07 | 2023-08-07 |  |  |  |
| 167 | 17.6.2 | Badezimmer EG | 1d? | 2023-08-07 | 2023-08-07 |  |  |  |
| 168 | 17.7 | **Streichen** | 1d? | 2023-08-07 | 2023-08-07 |  |  | Kiy |
| 169 | 17.7.1 | Eingangsbereich EG | 1d? | 2023-08-07 | 2023-08-07 |  |  | Kiy |
| 170 | 17.7.2 | Badezimmer EG | 1d? | 2023-08-07 | 2023-08-07 |  |  | Kiy |
| 172 | 18 | **Innentüren** | 12d? | 2023-08-07 | 2023-08-22 |  | start no earlier than 2023-08-07 |  |
| 173 | 18.1 | Innentüren bestellen | 1d? | 2023-08-07 | 2023-08-07 |  | start no earlier than 2023-07-10 |  |
| 174 | 18.2 | Innentüren montieren | 2d? | 2023-08-07 | 2023-08-08 |  |  |  |
| 175 | 18.3 | Innentüren: Rechnungsstellung | 10d? | 2023-08-09 | 2023-08-22 | 174 |  |  |
| 177 | 19 | **Treppe** | 54d? | 2023-08-07 | 2023-10-19 |  | start no earlier than 2023-08-07 |  |
| 178 | 19.1 | Treppe entwerfen | 1d? | 2023-08-07 | 2023-08-07 |  | start no earlier than 2023-08-02 | Wellmann; Anna-Carina; Andreas |
| 179 | 19.2 | Treppe ausmessen | 1d? | 2023-09-04 | 2023-09-04 | 155 | start no earlier than 2023-08-02 | Wellmann |
| 180 | 19.3 | Treppe bauen | 20d? | 2023-09-05 | 2023-10-02 | 178, 179 | start no earlier than 2023-08-02 | Wellmann |
| 181 | 19.4 | Treppe montieren | 3d? | 2023-10-03 | 2023-10-05 | 156, 180 | start no earlier than 2023-08-02 | Wellmann |
| 182 | 19.5 | Treppe: Rechnungstellung | 10d | 2023-10-06 | 2023-10-19 | 181 |  | Wellmann |
| 184 | 20 | **Hauseingangstür** | 15.5d? | 2023-08-07 | 2023-08-28 |  | start no earlier than 2023-08-07 |  |
| 185 | 20.1 | Ziegel aus Feldern entfernen | 1d? | 2023-08-07 | 2023-08-07 |  |  | Kettler |
| 186 | 20.2 | Ständer versetzen | 1d? | 2023-08-08 | 2023-08-08 | 185 |  | Budke |
| 187 | 20.3 | Öffnung aufmessen | 1d? | 2023-08-09 | 2023-08-09 | 186 |  | Rolfes |
| 188 | 20.4 | Felder zumauern | 1d? | 2023-08-10 | 2023-08-10 | 187 |  | Kettler |
| 189 | 20.5 | Außentür entwerfen | 0.25d? | 2023-08-07 | 2023-08-07 |  |  | Andreas; Anna-Carina; Lampe; Rolfes |
| 190 | 20.6 | Außentür bauen | 1d? | 2023-08-10 | 2023-08-10 | 187 |  | Rolfes |
| 191 | 20.7 | Außentür montieren | 1d? | 2023-08-11 | 2023-08-11 | 190 |  | Rolfes |
| 192 | 20.8 | Außentür abnehmen | 0.5d? | 2023-08-14 | 2023-08-14 | 191 |  | Andreas; Anna-Carina |
| 193 | 20.9 | Rechnungstellung: Außentür | 10d? | 2023-08-14 | 2023-08-28 | 192 |  | Rolfes |

| ID | WBS | Task | Duration | Start | Finish | Predecessors | Constraint | Resources |
| --- | --- | --- | --- | --- | --- | --- | --- | --- |
| 195 | 21 | **Projektabschluss** | 15d? | 2023-10-02 | 2023-10-20 |  | start no earlier than 2023-08-07 |  |
| 196 | 21.1 | Denkmalschutzrechtliche Abnahme | 1d? | 2023-10-02 | 2023-10-02 |  | start no earlier than 2023-10-02 | Lampe |
| 197 | 21.2 | Rechnungsprüfung zwecks Auszahlung der Fördermittel | 1d? | 2023-10-20 | 2023-10-20 | 20, 28, 33, 40, 88, 96, 103, 104, 174, 182, 193, 196 |  | Löseke |
